# Planificacion MOTOGO

Schedule from MS Project, 2025-10-09 to 2027-07-08, status date 2026-03-03, costs in $, A marks actual dates.

## Calendars

- Estándar: Mon-Fri 08:00-10:00, 10:30-13:00, 14:00-17:00; Sat-Sun off. Exceptions (off unless hours are given): 2025-11-01 (Dia de Todos los Santos 2025), 2025-11-16 (Independencia de Cartagena 2025), 2025-12-08 (Dia de velitas 2025), 2025-12-25 (Navidad 2025), 2026-01-01 (Año Nuevo 2026), 2026-03-23 (Dia de San Jose 2026), 2026-03-29 to 2026-04-05 (Semana Santa 2026), 2026-05-01 (Dia del trabajo 2026), 2026-05-18 (Dia de la Ascención 2026), 2026-06-08 (Dia Feriado 2026), 2026-07-06 (Dia San Pedro y San Pablo 2026), 2026-07-20 (Dia de la Independencia 2026), 2026-08-07 (Batalla de Boyaca 2026), 2026-08-15 (Dia de la virgen Maria 2026), 2026-10-19 (Dia de la raza 2026), 2026-11-01 (Dia de Todos los Santos 2026), 2026-11-16 (Independencia de Cartagena 2026), 2026-12-08 (Dia de velitas 2026), 2026-12-25 (Navidad 2026), 2027-01-01 (Año Nuevo 2027), 2027-03-19 (Dia San Jose 2027), 2027-03-21 to 2027-03-28 (Semana Santa 2027), 2027-05-01 (Dia del Trabajo), 2027-05-10 (Dia de la Ascención 2027), 2027-05-31 (Dia feriado 2027), 2027-07-05 (San Pedro y San Pablo 2027).

## Resources

| Resource | Rate |
| --- | --- |
| Analista | 21204 |
| Desarrolladores Junior | 27534 |
| Arquitecto Sotfware | 55069 |
| Testing's | 7959 |
| LENOVO THINKCENTRE NEO 50Q I5 8GB 256GB + MONITOR 24″ FHD | 1919900 |
| TODO EN UNO LENOVO AMD RYZEN 7-7730U 24GB RAM 512GB SSD 238″ FHD | 2379900 |
| Computador AMD Ryzen 5 9600X / 16GB DDR5 RGB De Ram / M.2 NVMe 480GB De Almacenamiento / Monitor MSI 24″ IPS FHD 1ms-144Hz | 3429000 |
| TODO EN UNO LENOVO AMD RYZEN 7-7730U 24GB RAM 512GB SSD 238″ FHD | 2379900 |

## Schedule

| ID | WBS | Task | Duration | Start | Finish | Predecessors | Complete | Remaining | Total slack | Free slack | Constraint | Resources | Work | Actual work | Cost | Actual cost |
| --- | --- | --- | --- | --- | --- | --- | --- | --- | --- | --- | --- | --- | --- | --- | --- | --- |
| 1 | 1 | **Planificación y Análisis** | 51.19d | 2025-10-09 A | 2025-12-26 A |  | 100% |  |  |  |  |  | 451.96h | 451.96h | 11,344,374.2 | 11,344,374.2 |
| 2 | 1.1 | Nombre del proyecto, planteamiento del problema, justificación | 9d | 2025-10-09 A | 2025-10-22 A |  | 100% |  |  |  | finish no earlier than 2025-10-22 | Analista | 72h | 72h | 1,526,688 | 1,526,688 |
| 3 | 1.2 | Pregunta del proyecto, objetivo general y objetivos específicos | 9d | 2025-10-23 A | 2025-11-05 A | 2 | 100% |  |  |  | finish no earlier than 2025-10-31 | Analista | 72h | 72h | 1,526,688 | 1,526,688 |
| 4 | 1.3 | Identificar partes interesadas (clientes, administrador, repartidor) | 4d | 2025-11-05 A | 2025-11-11 A | 3 | 100% |  |  |  | finish no earlier than 2025-11-10 | Analista | 32h | 32h | 678,528 | 678,528 |
| 5 | 1.4 | Alcance del proyecto | 6d | 2025-11-12 A | 2025-11-20 A | 4 | 100% |  |  |  | finish no earlier than 2025-11-20 | Analista | 48h | 48h | 1,017,792 | 1,017,792 |
| 6 | 1.5 | Diagrama del proceso actual (macroproceso y subprocesos) | 7d | 2025-11-21 A | 2025-12-02 A | 5 | 100% |  |  |  | finish no earlier than 2025-12-02 | Analista; Arquitecto Sotfware [50%] | 84h | 84h | 2,729,356 | 2,729,356 |
| 7 | 1.6 | Recolección de datos (encuestas, entrevistas, etc.) | 9d | 2025-12-03 A | 2025-12-17 A | 6 | 100% |  |  |  | finish no earlier than 2025-12-09 | Analista | 71.96h | 71.96h | 1,525,874.2 | 1,525,874.2 |
| 8 | 1.7 | Requerimientos funcionales y no funcionales (IEEE / historias de usuario) | 6d | 2025-12-17 A | 2025-12-26 A | 7 | 100% |  |  |  | finish no earlier than 2025-12-18 | Analista; Arquitecto Sotfware [50%] | 72h | 72h | 2,339,448 | 2,339,448 |
| 9 | 2 | **Diseño inicial del Sistema** | 47.5d | 2026-01-26 A | 2026-04-14 |  | 96% | 1.72d | 282.31d |  |  |  | 412h | 397.4h | 13,591,108 | 13,076,756.6 |
| 10 | 2.1 | Diagrama de casos de uso + documentación extendida | 10d | 2026-01-26 A | 2026-02-09 | 8 | 95% | 0.5d | 319.81d | 0d | finish no earlier than 2026-02-09 | Arquitecto Sotfware [50%]; Analista | 120h | 114h | 3,899,080 | 3,704,126 |
| 11 | 2.2 | Prototipos (Mockups / Wireframes en Figma, Draw.io, etc.) | 14d | 2026-02-04 A | 2026-02-25 | 10SS+7d | 95% | 0.7d | 308.81d | 13.5d | finish no earlier than 2026-02-23 | Desarrolladores Junior | 112h | 106.4h | 3,083,808 | 2,929,617.6 |
| 12 | 2.3 | Fichas técnicas + análisis de infraestructura + costos + recurso humano | 15d | 2026-02-20 A | 2026-03-13 | 11SS-3d | 95% | 0.75d | 297.31d |  | start no earlier than 2026-02-20 | Arquitecto Sotfware [50%] | 60h | 57h | 3,304,140 | 3,138,933 |
| 13 | 2.4 | Control de versiones (repositorio, commits, ramas) | 15d | 2026-03-16 A | 2026-04-14 A | 12 | 100% |  |  |  | start no earlier than 2026-03-16 | Desarrolladores Junior | 120h | 120h | 3,304,080 | 3,304,080 |
| 14 | 3 | **Diseño Técnico (Arquitectua y Base de Datos)** | 59.5d | 2026-04-20 | 2026-07-23 |  |  |  | 200.19d |  |  |  | 292h |  | 13,436,788 |  |
| 15 | 3.1 | Normalización del modelo relacional (3FN) | 10d | 2026-04-20 | 2026-05-05 | 13 |  |  | 230.19d | 0.5d | finish no earlier than 2026-05-05 | Arquitecto Sotfware [50%] | 40h |  | 2,202,760 |  |
| 16 | 3.2 | Diccionario de datos | 7d | 2026-05-06 | 2026-05-15 | 15 |  |  | 229.69d | 0d | finish no earlier than 2026-05-15 | Arquitecto Sotfware [50%] | 28h |  | 1,541,932 |  |
| 17 | 3.3 | Modelo relacional (Crow’s Foot + PK y FK + integridad referencial) | 13d | 2026-05-19 | 2026-06-05 | 16 |  |  | 229.69d | 0d | finish no earlier than 2026-06-03 | Arquitecto Sotfware [50%] | 52h |  | 2,863,588 |  |
| 18 | 3.4 | Diagrama de clases UML | 10d | 2026-06-05 | 2026-06-23 | 17 |  |  | 229.69d | 0d | finish no earlier than 2026-06-19 | Arquitecto Sotfware [50%] | 40h |  | 2,202,760 |  |
| 19 | 3.5 | Diagrama de despliegue UML | 9d | 2026-06-23 | 2026-07-08 | 18 |  |  | 229.69d | 0d | finish no earlier than 2026-06-30 | Arquitecto Sotfware [50%] | 36h |  | 1,982,484 |  |
| 20 | 3.6 | Prototipo navegable (HTML, CSS, Bootstrap/Tailwind) | 10d | 2026-07-03 | 2026-07-21 | 19SS+7d |  |  | 152.69d | 0d | finish no earlier than 2026-07-14 | Desarrolladores Junior | 80h |  | 2,202,720 |  |
| 21 | 3.7 | Control de versiones (evidencias Git) | 2d | 2026-07-21 | 2026-07-23 | 20 |  |  | 152.69d | 1.44d | finish no earlier than 2026-07-17 | Desarrolladores Junior | 16h |  | 440,544 |  |
| 22 | 4 | **Desarrollo** | 55.12d | 2026-07-27 | 2026-10-20 |  |  |  | 151.12d |  |  |  | 448h |  | 14,758,312 |  |
| 23 | 4.1 | Construcción base de datos (DDL) | 10d | 2026-07-27 | 2026-08-11 | 21 |  |  | 151.25d | 0.12d | finish no earlier than 2026-08-11 | Arquitecto Sotfware [50%]; Desarrolladores Junior | 120h |  | 4,405,480 |  |
| 24 | 4.2 | Uso de base de datos (DML, joins, consultas) | 13d | 2026-08-12 | 2026-08-31 | 23 |  |  | 151.12d | 0d | finish no earlier than 2026-08-31 | Desarrolladores Junior | 104h |  | 2,863,536 |  |
| 25 | 4.3 | Seguridad de datos (hash, bcrypt, sha256) | 12d | 2026-09-01 | 2026-09-17 | 24 |  |  | 151.12d | 0d |  | Arquitecto Sotfware [50%] | 48h |  | 2,643,312 |  |
| 26 | 4.4 | Desarrollo Front-End funcional | 18d | 2026-09-15 | 2026-10-12 | 25SS+10d |  |  | 151.12d | 0d | start no earlier than 2026-09-14 | Desarrolladores Junior | 144h |  | 3,964,896 |  |
| 27 | 4.5 | Control de versiones | 4d | 2026-10-12 | 2026-10-20 | 26 |  |  | 151.12d | 3.81d | finish no earlier than 2026-10-16 | Desarrolladores Junior | 32h |  | 881,088 |  |

| ID | WBS | Task | Duration | Start | Finish | Predecessors | Total slack | Free slack | Constraint | Resources | Work | Cost |
| --- | --- | --- | --- | --- | --- | --- | --- | --- | --- | --- | --- | --- |
| 28 | 5 | **Integración** | 34d | 2026-10-26 | 2026-12-17 |  | 84.31d |  |  |  | 272h | 8,185,528 |
| 29 | 5.1 | API REST | 12d | 2026-10-26 | 2026-11-11 | 27 | 147.31d | 0.44d | finish no earlier than 2026-11-11 | Desarrolladores Junior | 96h | 2,643,264 |
| 30 | 5.2 | Seguridad API (JWT, CORS, errores HTTP) | 10d | 2026-11-10 | 2026-11-25 | 29SS+10d | 132.88d | 0.56d | finish no earlier than 2026-11-25 | Arquitecto Sotfware [50%] | 40h | 2,202,760 |
| 31 | 5.3 | Documentación API (Swagger/Postman) | 8d | 2026-11-24 | 2026-12-04 | 30FS-2d | 132.31d | 0d | finish no earlier than 2026-12-04 | Analista | 64h | 1,357,056 |
| 32 | 5.4 | Pruebas con usuarios reales | 8d | 2026-12-02 | 2026-12-16 | 31SS+6d | 59.31d | 0d | finish no earlier than 2026-12-15 | Desarrolladores Junior | 64h | 1,762,176 |
| 33 | 5.5 | Control de versiones | 1d | 2026-12-16 | 2026-12-17 | 32 | 59.31d | 23d |  | Desarrolladores Junior | 8h | 220,272 |
| 34 | 6 | **Implementación** | 55d | 2027-01-25 | 2027-04-23 |  | 36.31d |  |  |  | 488h | 13,132,752 |
| 35 | 6.1 | Sistema completo (100%) | 15d | 2027-01-25 | 2027-02-15 | 33 | 36.31d | 0d | finish no earlier than 2027-02-15 | Desarrolladores Junior | 120h | 3,304,080 |
| 36 | 6.2 | CRUD, login, roles | 15d | 2027-02-16 | 2027-03-09 | 35 | 36.31d | 0d | finish no earlier than 2027-03-04 | Desarrolladores Junior | 120h | 3,304,080 |
| 37 | 6.3 | App móvil | 12d | 2027-03-10 | 2027-04-05 | 36 | 36.31d | 0d | finish no earlier than 2027-03-18 | Desarrolladores Junior | 96h | 2,643,264 |
| 38 | 6.4 | Consumo API móvil | 7d | 2027-04-05 | 2027-04-15 | 37 | 36.31d | 0d | finish no earlier than 2027-04-07 | Desarrolladores Junior | 56h | 1,541,904 |
| 39 | 6.5 | Metodología ágil + control de versiones | 6d | 2027-04-15 | 2027-04-23 | 38 | 36.31d | 0.56d | finish no earlier than 2027-04-16 | Desarrolladores Junior; Analista | 96h | 2,339,424 |
| 40 | 7 | **Pruebas y Cierre** | 46.75d | 2027-04-26 | 2027-07-08 |  | 0d |  |  |  | 272h | 4,841,008 |
| 41 | 7.1 | Pruebas (funcionales, integración, caja negra) | 11d | 2027-04-26 | 2027-05-12 | 39 | 35.75d | 10.44d | finish no earlier than 2027-05-12 | Testing's [50%] | 44h | 350,196 |
| 42 | 7.2 | Planes (instalación, respaldo, migración, capacitación) | 9d | 2027-05-12 | 2027-05-25 | 41SS | 27.31d | 7.44d | finish no earlier than 2027-05-25 | Analista | 72h | 1,526,688 |
| 43 | 7.3 | Modelo de calidad (ISO 25010) | 10d | 2027-05-24 | 2027-06-08 | 42SS | 18.88d | 8.12d | finish no earlier than 2027-06-08 | Testing's [50%] | 40h | 318,360 |
| 44 | 7.4 | Manuales (técnico, usuario, instalación) | 11d | 2027-06-07 | 2027-06-22 | 43SS | 9.75d |  | start no earlier than 2027-06-07 | Analista | 88h | 1,865,952 |
| 45 | 7.5 | Despliegue | 1d | 2027-07-01 | 2027-07-02 | 44SS | 0d |  | finish no earlier than 2027-07-02 | Arquitecto Sotfware [50%]; Desarrolladores Junior | 12h | 440,548 |
| 46 | 7.6 | Entrega final | 2d | 2027-07-06 | 2027-07-08 | 45 | 0d |  | start no earlier than 2027-07-06 | Analista | 16h | 339,264 |
